# AF-Twin Devops

How a schedule from GanttProject changed from version to version. A marks actual dates.

## Version 1 (saved 2018-08-13)

Note of the change: project planning added

| ID | WBS | Task | Duration | Start | Finish | Predecessors |
| --- | --- | --- | --- | --- | --- | --- |
| 1 |  | Admin feature to see list of AF-Twin users | 5d | 2018-08-27 | 2018-08-31 |  |
| 2 |  | Bug-10: Health monitoring UI freezes at application startup | 5d | 2018-09-03 | 2018-09-07 |  |
| 3 |  | Add different ISAMI option for stress rotation | 10d | 2018-09-03 | 2018-09-14 |  |
| 4 |  | Improving query performance by applying batch process | 5d | 2018-09-17 | 2018-09-21 |  |
| 5 | 5 | **Pilot Point Database Enhancement** | 0d | 2018-08-13 | 2018-08-13 |  |
| 6 |  | SQL Statement Creation | 5d | 2018-08-13 | 2018-08-17 |  |
| 7 |  | PP Data Migration | 10d | 2018-08-20 | 2018-08-31 | 6 |
| 8 |  | Update Data Server codebase | 10d | 2018-09-03 | 2018-09-14 | 7 |
| 9 |  | Update Data Analyst codebase | 10d | 2018-09-17 | 2018-09-28 | 8 |
| 10 |  | Permissions for A/C program, component, section | 10d | 2018-09-17 | 2018-09-28 |  |
| 11 |  | Server Stop/Restart Implementation | 5d | 2018-10-01 | 2018-10-05 |  |
| 12 |  | Batch Analysis Mode | 10d | 2018-09-24 | 2018-10-05 |  |
| 13 | 9 | **Plugin System Design & Development** | 0d | 2018-08-13 | 2018-08-13 |  |
| 14 |  | Standardize Python executable creation process for all target OS (Plugins) | 10d | 2018-08-13 | 2018-08-24 |  |
| 15 |  | Enhance Java API for plugins (Plugins) | 15d | 2018-08-13 | 2018-08-31 |  |
| 16 |  | Standardize Perl executable creation process for all target OS (Plugins) | 10d | 2018-08-20 | 2018-08-31 |  |
| 17 |  | Standardize FORTRAN executable creation process for all target OS (Plugins) | 10d | 2018-10-01 | 2018-10-12 |  |
| 18 |  | Server Announcement UI | 5d | 2018-10-08 | 2018-10-12 |  |
| 19 |  | Migration to GISEH 2.0 & ISAMI 10 | 10d | 2018-10-08 | 2018-10-19 |  |
| 20 |  | Streamlining ISAMI material database to AF-Twin central database | 10d | 2018-10-15 | 2018-10-26 |  |
| 21 |  | Keeping only Most Significant 5 TFs in stress sequence | 10d | 2018-10-15 | 2018-10-26 |  |
| 22 |  | Replace Apache database engine with H2 | 10d | 2018-10-22 | 2018-11-02 |  |
| 23 |  | PC Services Deployment | 10d | 2018-10-29 | 2018-11-09 |  |
| 24 |  | Persistence of Analysis Parameters | 5d | 2018-11-05 | 2018-11-09 |  |
| 25 |  | Notification Center | 10d | 2018-10-29 | 2018-11-09 |  |
| 26 |  | Automated Equivalent Stress Analysis | 10d | 2018-11-12 | 2018-11-23 |  |
| 27 |  | 3D Stress Mapping Visualization | 10d | 2018-11-12 | 2018-11-23 |  |
| 28 |  | Store Pilot Point Charts with Attributes | 10d | 2018-11-12 | 2018-11-23 |  |

## Version 2 (saved 2018-08-15)

Note of the change: Project planning added.

Last finish stays 2018-11-23.

Added:

| ID | Task | Duration | Start | Finish | Resources |
| --- | --- | --- | --- | --- | --- |
| 11 | Venus Release | 0d | 2018-09-14 | 2018-09-14 |  |
| 12 | Batch Analysis Mode - Part 1 | 3d | 2018-09-19 | 2018-09-21 | Gustavo |
| 24 | Mercury Release | 0d | 2018-10-26 | 2018-10-26 |  |
| 32 | Sun Release | 0d | 2018-11-23 | 2018-11-23 |  |
| 33 | **Not Available** | 0d | 2018-08-27 | 2018-08-27 |  |
| 34 | Not Available | 5d | 2018-08-27 | 2018-08-31 | Gustavo |
| 35 | Not Available | 2d | 2018-09-17 | 2018-09-18 | Gustavo |
| 36 | Not Available | 3d | 2018-09-17 | 2018-09-19 | Murat |
| 37 | Not Available | 5d | 2018-09-24 | 2018-09-28 | Gustavo |
| 38 | Not Available | 5d | 2018-10-08 | 2018-10-12 | Murat |
| 39 | Not Available | 2d | 2018-10-24 | 2018-10-25 | Murat |
| 40 | Not Available | 18d | 2018-10-08 | 2018-10-31 | Gustavo |
| 41 | Not Available | 2d | 2018-11-20 | 2018-11-21 | Murat |

Changed:

| ID | Task | Start | Finish | Duration | Predecessors | Other |
| --- | --- | --- | --- | --- | --- | --- |
| 1 | Admin feature to see list of AF-Twin users | 2018-08-27 → 2018-08-20 (-7d) | 2018-08-31 → 2018-08-21 (-10d) | 5d → 2d |  |  |
| 2 | Improving query performance by applying batch process | 2018-09-17 → 2018-08-22 (-26d) | 2018-09-21 → 2018-08-24 (-28d) | 5d → 3d |  |  |
| 3 | Bug-10: Health monitoring UI freezes at application startup |  | 2018-09-07 → 2018-09-05 (-2d) | 5d → 3d |  |  |
| 5 | Standardize Python executable creation process for all target OS (Plugins) |  | 2018-08-24 → 2018-08-17 (-7d) | 10d → 5d |  |  |
| 8 | Standardize FORTRAN executable creation process for all target OS (Plugins) | 2018-10-01 → 2018-09-06 (-25d) | 2018-10-12 → 2018-09-07 (-35d) | 10d → 2d |  |  |
| 10 | Replace Apache database engine with H2 | 2018-10-22 → 2018-09-10 (-42d) | 2018-11-02 → 2018-09-14 (-49d) | 10d → 5d |  | resources Gustavo → Murat |
| 15 | SQL Statement Creation |  | 2018-08-17 → 2018-08-14 (-3d) | 5d → 2d |  |  |
| 16 | PP Data Migration |  |  |  | 15 → 15FS+3d |  |
| 18 | Update Data Analyst codebase | 2018-09-17 → 2018-09-20 (+3d) | 2018-09-28 → 2018-10-05 (+7d) | 10d → 12d | 17 → 17FS+3d |  |
| 20 | Batch Analysis Mode - Part 2 | 2018-09-24 → 2018-10-01 (+7d) |  | 10d → 5d |  | was named Batch Analysis Mode |
| 22 | Keeping only Most Significant 5 TFs in stress sequence |  | 2018-10-26 → 2018-10-23 (-3d) | 10d → 7d |  |  |
| 23 | Notification Center | 2018-10-29 → 2018-10-15 (-14d) | 2018-11-09 → 2018-10-26 (-14d) |  |  |  |
| 25 | Migration to GISEH 2.0 & ISAMI 10 | 2018-10-08 → 2018-11-01 (+24d) | 2018-10-19 → 2018-11-09 (+21d) | 10d → 7d |  |  |
| 26 | Streamlining ISAMI material database to AF-Twin central database | 2018-10-15 → 2018-10-29 (+14d) | 2018-10-26 → 2018-11-09 (+14d) |  |  |  |
| 27 | Automated Equivalent Stress Analysis | 2018-11-12 → 2018-10-29 (-14d) | 2018-11-23 → 2018-11-09 (-14d) |  |  |  |
| 28 | PC Services Deployment | 2018-10-29 → 2018-11-12 (+14d) | 2018-11-09 → 2018-11-16 (+7d) | 10d → 5d |  |  |
| 29 | Persistence of Analysis Parameters | 2018-11-05 → 2018-11-12 (+7d) | 2018-11-09 → 2018-11-16 (+7d) |  |  |  |
| 31 | Store Pilot Point Charts with Attributes | 2018-11-12 → 2018-11-19 (+7d) |  | 10d → 5d |  |  |
